# Projektni plan-SLunjski

How a schedule from MS Project changed from version to version. A marks actual dates.

## Version 1 (saved 2013-05-19, file Projektni plan-SLunjski.mpp)

Note of the change: Merge branch 'master' of https://github.com/deno6/AppGrade

| ID | WBS | Task | Duration | Start | Finish | Predecessors | Complete | Total float |
| --- | --- | --- | --- | --- | --- | --- | --- | --- |
| 1 | 1 | **Projekt AppGrade** | 50d | 2013-04-18 A | 2013-06-26 |  | 50% |  |
| 2 |  | Početak projekta | 0d | 2013-04-18 A | 2013-04-18 A |  | 100% |  |
| 3 | 1.2 | **Prva faza** | 23d | 2013-04-18 A | 2013-05-19 A | 2 | 100% |  |
| 4 |  | Izrada projektnog plana I ponude | 5d | 2013-04-18 A | 2013-04-24 A | 2 | 100% |  |
| 5 |  | Izrada dijagrama slučajeva | 2d | 2013-04-29 A | 2013-04-30 A | 4 | 100% |  |
| 6 |  | Izrada dijagrama slijeda, aktivnosti I klasa | 4d | 2013-05-01 A | 2013-05-06 A | 5 | 100% |  |
| 7 |  | Opis dijagrama u word dokumentu | 4d | 2013-05-07 A | 2013-05-10 A | 6 | 100% |  |
| 8 |  | Izrada era modela | 7d | 2013-05-07 A | 2013-05-15 A | 6 | 100% |  |
| 9 |  | Izrada kostura aplikacije | 3d | 2013-05-16 A | 2013-05-19 A | 8 | 100% |  |
| 10 |  | Dorada word dokumenta | 3d | 2013-05-16 A | 2013-05-18 A | 8 | 100% |  |
| 11 |  | Kraj prve faze | 0d | 2013-05-19 A | 2013-05-19 A | 10 | 100% |  |
| 12 | 1.3 | **Druga faza** | 27d | 2013-05-20 | 2013-06-26 | 3 |  | 0d |
| 13 |  | Početak druge faze | 0d | 2013-05-20 | 2013-05-20 | 11 |  |  |
| 14 |  | Dorada aplikacije | 12d | 2013-05-20 | 2013-06-04 | 13 |  |  |
| 15 |  | Dogovor oko daljenjeg razvoja | 2d | 2013-06-05 | 2013-06-06 | 14 |  |  |
| 16 |  | Dorada aplikacije 2 | 4d | 2013-06-07 | 2013-06-12 | 15 |  |  |
| 17 |  | Dogovor oko daljnjeg razvoja 2 | 2d | 2013-06-13 | 2013-06-14 | 16 |  |  |
| 18 |  | Dorada aplikacije 3 | 6d | 2013-06-17 | 2013-06-24 | 17 |  |  |
| 19 |  | Zavrsna faza-dogovor I detalji | 2d | 2013-06-24 | 2013-06-25 | 18 |  |  |
| 20 |  | Predaja projekta | 0d | 2013-06-26 | 2013-06-26 | 19 |  |  |
| 21 |  | Kraj druge faze | 0d | 2013-06-26 | 2013-06-26 | 12 |  |  |
| 22 |  | Kraj projekta | 0d | 2013-06-26 | 2013-06-26 | 1 |  |  |

## Version 2 (saved 2013-06-25, file Projektni plan-zavrsni SLunjski.mpp)

Note of the change: Projektni plan-final

Last finish 2013-06-26 → 2013-06-27 (+1d). Complete tasks 9 → 17.

Changed:

| ID | Task | Start | Finish | Complete | Total float |
| --- | --- | --- | --- | --- | --- |
| 1 | **Projekt AppGrade** |  |  | 50% → 99% |  |
| 12 | **Druga faza** | 2013-05-20 A | 2013-06-26 A | 0% → 100% | 0d → none |
| 13 | Početak druge faze | 2013-05-20 A | 2013-05-20 A | 0% → 100% |  |
| 14 | Dorada aplikacije | 2013-05-20 A | 2013-06-04 A | 0% → 100% |  |
| 15 | Dogovor oko daljenjeg razvoja | 2013-06-05 A | 2013-06-06 A | 0% → 100% |  |
| 16 | Dorada aplikacije 2 | 2013-06-07 A | 2013-06-12 A | 0% → 100% |  |
| 17 | Dogovor oko daljnjeg razvoja 2 | 2013-06-13 A | 2013-06-14 A | 0% → 100% |  |
| 18 | Dorada aplikacije 3 | 2013-06-17 A | 2013-06-24 A | 0% → 100% |  |
| 19 | Zavrsna faza-dogovor I detalji | 2013-06-24 A | 2013-06-25 A | 0% → 100% |  |
| 20 | Predaja projekta | 2013-06-26 A | 2013-06-26 A | 0% → 100% |  |
| 22 | Kraj projekta | 2013-06-26 → 2013-06-27 (+1d) | 2013-06-26 → 2013-06-27 (+1d) |  |  |
